# Menta 0.3 research

Schedule from GanttProject, 2012-01-13 to 2012-05-22.
Research project to automate the incident handling.

## Calendars

- Project calendar: Mon-Fri working; Sat-Sun off.

## Resources

| Resource | Group |
| --- | --- |
| Max | Architect |
| Alex | Team lead |
| Adel | Developer |
| Bulat | Developer |
| Renat | Developer |
| Artem | Developer |

## Schedule

| ID | WBS | Task | Type | Duration | Start | Finish | Predecessors | Resources |
| --- | --- | --- | --- | --- | --- | --- | --- | --- |
| 1 | 1 | **Analysis** |  | 11d | 2012-01-16 | 2012-01-30 |  |  |
| 2 | 1.1 | Incidents |  | 5d | 2012-01-16 | 2012-01-20 |  | Bulat; Adel [50%]; Alex [50%]; Artem; Renat |
| 3 | 1.2 | Workbook articles |  | 6d | 2012-01-23 | 2012-01-30 | 2 | Bulat; Adel; Alex; Artem; Renat |
| 4 | 2 | **Design Emotion Machine** |  | 38d | 2012-01-23 | 2012-03-14 |  |  |
| 5 | 2.1 | Inbound textual description |  | 1d | 2012-01-23 | 2012-01-23 |  | Alex |
| 6 | 2.2 | Internal knowledge(atom) representations |  | 8d | 2012-01-23 | 2012-02-01 |  | Max |
| 7 | 2.3 | Formalization outbound structures |  | 6d | 2012-02-02 | 2012-02-09 | 6 | Max |
| 8 | 2.4 | Design Solution HowTo-s |  | 16d | 2012-01-24 | 2012-02-14 | 5 | Alex |
| 9 | 2.5 | Design Critics |  | 12d | 2012-02-10 | 2012-02-27 | 7 | Max |
| 10 | 2.6 | Design Selector |  | 12d | 2012-02-15 | 2012-03-01 | 8 | Alex |
| 11 | 2.7 | Design Way2Think |  | 12d | 2012-02-28 | 2012-03-14 | 9 | Max |
| 12 | 3 | Analysis and design | milestone | 0d | 2012-03-15 | 2012-03-15 | 1, 4 | Alex |
| 13 | 4 | **OpenCog prototype** |  | 31d | 2012-01-31 | 2012-03-13 | 1 |  |
| 14 | 4.1 | **CogBuntu** |  | 3d | 2012-01-31 | 2012-02-02 |  |  |
| 15 | 4.1.1 | Red documentation |  | 1d | 2012-01-31 | 2012-01-31 |  | Bulat; Adel; Alex; Artem; Renat |
| 16 | 4.1.2 | Install CogBuntu |  | 2d | 2012-02-01 | 2012-02-02 | 15 | Bulat; Adel; Alex; Artem; Renat |
| 17 | 4.2 | **AtomSpace Analysis** |  | 22d | 2012-02-03 | 2012-03-05 | 14 | Artem |
| 18 | 4.2.1 | Read documentation |  | 2d | 2012-02-03 | 2012-02-06 |  | Artem |
| 19 | 4.2.2 | Test storage using Cookbook |  | 4d | 2012-02-07 | 2012-02-10 | 18 |  |
| 20 | 4.2.3 | Test storage usability for knowledge representation |  | 16d | 2012-02-13 | 2012-03-05 | 19 |  |
| 21 | 4.3 | **Probability Logic Engines analysis** |  | 22d | 2012-02-03 | 2012-03-05 | 14 | Renat |
| 22 | 4.3.1 | **PLN analysis** |  | 6d | 2012-02-03 | 2012-02-10 |  |  |
| 23 | 4.3.1.1 | Read documentation |  | 2d | 2012-02-03 | 2012-02-06 |  |  |
| 24 | 4.3.1.2 | Test PLN using NARS data |  | 4d | 2012-02-07 | 2012-02-10 | 23 |  |
| 25 | 4.3.2 | Bayesian inference |  | 16d | 2012-02-13 | 2012-03-05 | 24 |  |

| ID | WBS | Task | Duration | Start | Finish | Predecessors | Resources |
| --- | --- | --- | --- | --- | --- | --- | --- |
| 26 | 4.4 | **Embodiment** | 28d | 2012-02-03 | 2012-03-13 | 1, 14 | Adel |
| 27 | 4.4.1 | Read documentation | 8d | 2012-02-03 | 2012-02-14 |  |  |
| 28 | 4.4.2 | Test embodiment system to simulate Intellix | 20d | 2012-02-15 | 2012-03-13 | 27 |  |
| 29 | 4.5 | **Natural language processors** | 18d | 2012-02-03 | 2012-02-28 | 14 | Bulat |
| 30 | 4.5.1 | RelEx | 8d | 2012-02-03 | 2012-02-14 |  |  |
| 31 | 4.5.2 | Stanford Parser | 4d | 2012-02-15 | 2012-02-20 | 30 |  |
| 32 | 4.5.3 | OpenNLP | 6d | 2012-02-21 | 2012-02-28 | 31 |  |
| 33 | 5 | **System Training prototype** | 60d | 2012-02-29 | 2012-05-22 | 14 |  |
| 34 | 5.1 | MOSES | 18d | 2012-02-29 | 2012-03-23 | 29 | Bulat |
| 35 | 5.2 | Bayesian network | 16d | 2012-03-06 | 2012-03-27 | 17 | Artem |
| 36 | 5.3 | **Training** | 19d | 2012-03-02 | 2012-03-28 |  |  |
| 37 | 5.3.1 | **Training data structures** | 19d | 2012-03-02 | 2012-03-28 |  |  |
| 38 | 5.3.1.1 | Incident description | 1d | 2012-03-02 | 2012-03-02 | 10 | Alex |
| 39 | 5.3.1.2 | Incident category | 1d | 2012-03-05 | 2012-03-05 | 38 | Alex |
| 40 | 5.3.1.3 | **Incident formalized description** | 10d | 2012-03-15 | 2012-03-28 | 11 | Max |
| 41 | 5.3.1.3.1 | Model | 10d | 2012-03-15 | 2012-03-28 | 11 | Max |
| 42 | 5.3.1.4 | Incident solution(Migrate HowTo approach | 10d | 2012-03-06 | 2012-03-19 | 39 | Alex |
| 43 | 5.4 | **Create formalized description generalisation mechanism** | 38d | 2012-03-06 | 2012-04-26 |  |  |
| 44 | 5.4.1 | **Create common parts selector and variable introducer** | 38d | 2012-03-06 | 2012-04-26 |  |  |
| 45 | 5.4.1.1 | Comparator | 6d | 2012-03-06 | 2012-03-13 | 21 | Renat |
| 46 | 5.4.1.2 | Recursive runner | 8d | 2012-03-14 | 2012-03-23 | 45 | Renat |
| 47 | 5.4.1.3 | **Variable introducer** | 21d | 2012-03-29 | 2012-04-26 |  |  |
| 48 | 5.4.1.3.1 | Design variable structure | 4d | 2012-03-29 | 2012-04-03 | 41 | Max |
| 49 | 5.4.1.3.2 | Implement and test variable | 8d | 2012-04-04 | 2012-04-13 | 48 | Max |
| 50 | 5.4.1.3.3 | Named variables builder | 8d | 2012-04-16 | 2012-04-25 | 49 | Max |
| 51 | 5.4.1.3.4 | Unnamed variables builder | 8d | 2012-04-17 | 2012-04-26 | 62 | Adel |

| ID | WBS | Task | Duration | Start | Finish | Predecessors | Resources |
| --- | --- | --- | --- | --- | --- | --- | --- |
| 52 | 5.5 | **Incident classification algorithm** | 16d | 2012-03-14 | 2012-04-04 |  |  |
| 53 | 5.5.1 | **Create test data for KnowledgeBaseAnnotator** | 16d | 2012-03-14 | 2012-04-04 |  |  |
| 54 | 5.5.1.1 | Allowed Software list | 6d | 2012-03-14 | 2012-03-21 | 26 | Adel |
| 55 | 5.5.1.2 | Over software actions | 4d | 2012-03-26 | 2012-03-29 | 34 | Bulat |
| 56 | 5.5.1.3 | Software attributes | 8d | 2012-03-26 | 2012-04-04 | 46 | Renat |
| 57 | 5.5.1.4 | Software states | 4d | 2012-03-20 | 2012-03-23 | 42 | Alex |
| 58 | 5.6 | **Create validation criteria inference approach** | 46d | 2012-03-20 | 2012-05-22 |  |  |
| 59 | 5.6.1 | Analyse validation criteria types | 10d | 2012-03-22 | 2012-04-04 | 54 | Adel |
| 60 | 5.6.2 | Create descriptions via predicates (logical operations) | 14d | 2012-03-20 | 2012-04-06 | 42 | Alex; Artem |
| 61 | 5.6.3 | **Create validation mechanism possibly via PLN** | 12d | 2012-03-30 | 2012-04-16 |  |  |
| 62 | 5.6.3.1 | Design adapter | 8d | 2012-04-05 | 2012-04-16 | 59 | Adel |
| 63 | 5.6.3.2 | Implement adapter | 12d | 2012-03-30 | 2012-04-16 | 55 | Bulat; Renat |
| 64 | 5.6.4 | **Create Solution generation prototype** | 32d | 2012-04-09 | 2012-05-22 |  |  |
| 65 | 5.6.4.1 | HowTo types = 16 - 40 | 16d | 2012-04-09 | 2012-04-30 | 60 | Alex |
| 66 | 5.6.4.2 | Solution description language = 32 - 40 | 32d | 2012-04-09 | 2012-05-22 | 60 | Artem |
| 67 | 5.6.4.3 | Create 10 Solution descriptions = 16 - 32 | 16d | 2012-04-17 | 2012-05-08 | 63 | Bulat |
| 68 | 5.6.4.4 | **Train Solutions** | 23d | 2012-04-17 | 2012-05-17 |  |  |
| 69 | 5.6.4.4.1 | Analyse machine learning algorithms (C 4.5, Bayes network) = 16 - 24 | 16d | 2012-04-17 | 2012-05-08 | 63 | Renat |
| 70 | 5.6.4.4.2 | Train 10 Solutions (in: formalised problem description, out Solution) = 16 - 24 | 16d | 2012-04-26 | 2012-05-17 | 50 | Max |
| 71 | 6 | **Emotion Machine Soltion** | 8d | 2012-01-13 | 2012-01-24 |  |  |
| 72 | 6.1 | **Prototype Critics, Way2Think, Selector** | 8d | 2012-01-13 | 2012-01-24 |  |  |
| 73 | 6.1.1 | **Implement Critics** | 8d | 2012-01-13 | 2012-01-24 |  |  |
| 74 | 6.1.1.1 | **Deliberative Critics** | 8d | 2012-01-13 | 2012-01-24 |  |  |
| 75 | 6.1.1.1.1 | Current activity goal representation = 6 - 8 [possibly should try several approaches] | 6d | 2012-01-13 | 2012-01-20 |  |  |
| 76 | 6.1.1.1.2 | Current task state representation = 4 - 6 [possibly should try several representations] | 4d | 2012-01-13 | 2012-01-18 |  |  |
| 77 | 6.1.1.1.3 | Reasoning over current state with Reasoner adapter development = 8 - 10 | 8d | 2012-01-13 | 2012-01-24 |  |  |
| 78 | 6.1.1.2 | Reflective Critic | 1d | 2012-01-13 | 2012-01-13 |  |  |
| 79 | 7 | Develop self-control mechanism | 10d | 2012-01-13 | 2012-01-26 |  |  |
| 80 | 8 | Develop Energy control mechanism. | 1d | 2012-01-13 | 2012-01-13 |  |  |
| 81 | 9 | Design Energy concept = 4 | 1d | 2012-01-13 | 2012-01-13 |  |  |
| 82 | 10 | Design Energy assignment mechanism during training = 2 | 1d | 2012-01-13 | 2012-01-13 |  |  |
| 83 | 11 | Implement Energy concept = 2 | 1d | 2012-01-13 | 2012-01-13 |  |  |
| 84 | 12 | Implement Energy assignment mechanism = 4 | 1d | 2012-01-13 | 2012-01-13 |  |  |
| 85 | 13 | Develop Sub-goal control mechanism. | 1d | 2012-01-13 | 2012-01-13 |  |  |
| 86 | 14 | Design sub-goal control mechanism = 4 | 1d | 2012-01-13 | 2012-01-13 |  |  |
| 87 | 15 | Implement sub-goal control mechanism = 4 | 1d | 2012-01-13 | 2012-01-13 |  |  |
| 88 | 16 | Develop Evidence control mechanism. | 1d | 2012-01-13 | 2012-01-13 |  |  |
| 89 | 17 | Design Evidence control mechanism = 4 - 10 [no clear understanding of evidence control mechanism, possibly further research required] | 1d | 2012-01-13 | 2012-01-13 |  |  |
| 90 | 18 | Implement Evidence control mechanism = 4 - 10 | 1d | 2012-01-13 | 2012-01-13 |  |  |
| 91 | 19 | Self-Reflective Critic = not requested in the prototype | 1d | 2012-01-13 | 2012-01-13 |  |  |
| 92 | 20 | Self-Conscious Critic = not requested in the prototype | 1d | 2012-01-13 | 2012-01-13 |  |  |
| 93 | 21 | Prototype Selector = 6 - 8 | 1d | 2012-01-13 | 2012-01-13 |  |  |
| 94 | 22 | Prototype Way2Think | 1d | 2012-01-13 | 2012-01-13 |  |  |
| 95 | 23 | Create base constructs(HowTo-s) = 2 - 4 | 1d | 2012-01-13 | 2012-01-13 |  |  |
| 96 | 24 | Copy file | 1d | 2012-01-13 | 2012-01-13 |  |  |
| 97 | 25 | Move file | 1d | 2012-01-13 | 2012-01-13 |  |  |
| 98 | 26 | Delete file | 1d | 2012-01-13 | 2012-01-13 |  |  |
| 99 | 27 | Install program | 1d | 2012-01-13 | 2012-01-13 |  |  |
| 100 | 28 | Uninstall program | 1d | 2012-01-13 | 2012-01-13 |  |  |
| 101 | 29 | Add user to user group | 1d | 2012-01-13 | 2012-01-13 |  |  |
| 102 | 30 | Remove user from user group | 1d | 2012-01-13 | 2012-01-13 |  |  |
| 103 | 31 | Knowing How (select from KB) = 4 - 8 | 1d | 2012-01-13 | 2012-01-13 |  |  |
| 104 | 32 | Extensive Search (search in KB) = 12 - 24 [graph search could be not strait-forward] | 1d | 2012-01-13 | 2012-01-13 |  |  |
| 105 | 33 | Reasoning by Analogy = 32 - 40 [graph analogy API could be not strait forward] | 1d | 2012-01-13 | 2012-01-13 |  |  |
| 106 | 34 | Divide and Conquer | 1d | 2012-01-13 | 2012-01-13 |  |  |
| 107 | 35 | Add analytical HowTo-s to basic set: | 1d | 2012-01-13 | 2012-01-13 |  |  |
| 108 | 36 | Wrong software was installed = 4 | 1d | 2012-01-13 | 2012-01-13 |  |  |
| 109 | 37 | Two direct instructions in one incident description = 4 | 1d | 2012-01-13 | 2012-01-13 |  |  |
| 110 | 38 | Add Interpretation mechanism over current state of the system | 1d | 2012-01-13 | 2012-01-13 |  |  |
| 111 | 39 | Variable and current state addressing = 12 - 16 | 1d | 2012-01-13 | 2012-01-13 |  |  |
| 112 | 40 | Logical operation execution = 16 | 1d | 2012-01-13 | 2012-01-13 |  |  |
| 113 | 41 | Exists | 1d | 2012-01-13 | 2012-01-13 |  |  |
| 114 | 42 | Equals value | 1d | 2012-01-13 | 2012-01-13 |  |  |
| 115 | 43 | Conjunction | 1d | 2012-01-13 | 2012-01-13 |  |  |
| 116 | 44 | Implication | 1d | 2012-01-13 | 2012-01-13 |  |  |
| 117 | 45 | Not | 1d | 2012-01-13 | 2012-01-13 |  |  |
| 118 | 46 | Planning (will not be implemented in prototype). | 1d | 2012-01-13 | 2012-01-13 |  |  |
| 119 | 47 | Simplification (will not be implemented in prototype). | 1d | 2012-01-13 | 2012-01-13 |  |  |
| 120 | 48 | Elevation (will not be implemented in prototype). | 1d | 2012-01-13 | 2012-01-13 |  |  |
| 121 | 49 | Reformulation (will not be implemented in prototype). | 1d | 2012-01-13 | 2012-01-13 |  |  |

| ID | WBS | Task | Duration | Start | Finish |
| --- | --- | --- | --- | --- | --- |
| 122 | 50 | Self-reflection (will not be implemented in prototype). | 1d | 2012-01-13 | 2012-01-13 |
| 123 | 51 | Contradiction (will not be implemented in prototype). | 1d | 2012-01-13 | 2012-01-13 |
| 124 | 52 | Use external representations (will not be implemented in prototype). | 1d | 2012-01-13 | 2012-01-13 |
| 125 | 53 | Simulation (build the model based on inbound information) = | 1d | 2012-01-13 | 2012-01-13 |
| 126 | 54 | Search for concept in the KB. = 16 | 1d | 2012-01-13 | 2012-01-13 |
| 127 | 55 | Search for properties in KB. = 4 | 1d | 2012-01-13 | 2012-01-13 |
| 128 | 56 | Create connections of found concepts. = 2 | 1d | 2012-01-13 | 2012-01-13 |
| 129 | 57 | Support context. = 2 | 1d | 2012-01-13 | 2012-01-13 |
| 130 | 58 | Correlation (will not be implemented in prototype). | 1d | 2012-01-13 | 2012-01-13 |
| 131 | 59 | Logical Reasoning see PLN and Bayesian inference | 1d | 2012-01-13 | 2012-01-13 |
| 132 | 60 | Wishful thinking (will not be implemented in prototype). | 1d | 2012-01-13 | 2012-01-13 |
| 133 | 61 | Impersonation (will not be implemented in prototype). | 1d | 2012-01-13 | 2012-01-13 |
| 134 | 62 | Cry for help (escalation) see | 1d | 2012-01-13 | 2012-01-13 |
| 135 | 63 | Resignation (will not be implemented in prototype). | 1d | 2012-01-13 | 2012-01-13 |
| 136 | 64 | Test main perceiving workflow | 1d | 2012-01-13 | 2012-01-13 |
| 137 | 65 | Prototype Validation criteria to be used in test = should be done as part of Training prototype | 1d | 2012-01-13 | 2012-01-13 |
| 138 | 66 | Prototype Main Workflow. = 10 - 14 [some not well tested bugs could slow down the development]{Models, Critics, Way2Think ready to use} | 1d | 2012-01-13 | 2012-01-13 |
